# ISMS Project plan

Schedule from MS Project, 2010-09-02 to 2011-03-10.
Example MS project plan
Thanks to the contributors for providing us with this docume
Thanks to the contributors for providing us with this document

## Calendars

- Standard: Mon-Fri 08:00-12:00, 13:00-17:00; Sat-Sun off.

## Schedule

| ID | WBS | Task | Type | Duration | Start | Finish | Predecessors | Baseline start | Baseline finish | Baseline duration | Total slack | Free slack | Constraint |
| --- | --- | --- | --- | --- | --- | --- | --- | --- | --- | --- | --- | --- | --- |
| 1 | 1 | **ISO 27001 ISMS Implementation Plan** |  | 136d? | 2010-09-02 | 2011-03-10 |  | 2010-09-02 | 2011-03-10 | 136d | 0d |  |  |
| 2 | 1.1 | **Clarify priorities to develop an ISMS** |  | 6d | 2010-09-02 | 2010-09-09 |  | 2010-09-02 | 2010-09-09 | 6d | 69.62d | 0d |  |
| 3 | 1.1.1 | Initial scoping meeting |  | 2d | 2010-09-02 | 2010-09-03 |  | 2010-09-02 | 2010-09-03 | 2d | 69.62d | 0d |  |
| 4 | 1.1.2 | Determine the objectives of ISMS implementation |  | 3d | 2010-09-06 | 2010-09-08 | 3 | 2010-09-06 | 2010-09-08 | 3d | 69.62d | 0d | start no earlier than 2010-09-06 |
| 5 | 1.1.3 | Document objectives |  | 1d | 2010-09-09 | 2010-09-09 | 4 | 2010-09-09 | 2010-09-09 | 1d | 69.62d | 0d | start no earlier than 2010-09-09 |
| 6 | 1.2 | **Define the preliminary ISMS scope** |  | 3.25d | 2010-09-10 | 2010-09-15 |  | 2010-09-10 | 2010-09-15 | 3.25d | 69.62d | 0d |  |
| 7 | 1.2.1 | Develop the preliminary ISMS scope |  | 2h | 2010-09-10 | 2010-09-10 | 5 | 2010-09-10 | 2010-09-10 | 2h | 69.62d | 0d | start no earlier than 2010-09-10 |
| 8 | 1.2.2 | Define roles & responsibilities |  | 4h | 2010-09-10 | 2010-09-10 | 7 | 2010-09-10 | 2010-09-10 | 4h | 69.62d | 0d | start no earlier than 2010-09-10 |
| 9 | 1.2.3 | Document the preliminary ISMS scope |  | 2d | 2010-09-10 | 2010-09-14 | 7, 8 | 2010-09-10 | 2010-09-14 | 2d | 69.62d | 0d | start no earlier than 2010-09-10 |
| 10 | 1.2.4 | Document roles & responsibilities |  | 4h | 2010-09-14 | 2010-09-15 | 9 | 2010-09-14 | 2010-09-15 | 4h | 69.62d | 0d | start no earlier than 2010-09-14 |
| 11 | 1.3 | **Create Business Case for PRB submission** |  | 4d | 2010-09-15 | 2010-09-21 |  | 2010-09-15 | 2010-09-21 | 4d | 69.62d | 0d |  |
| 12 | 1.3.1 | Draft Business Case |  | 2d | 2010-09-15 | 2010-09-17 | 9, 10 | 2010-09-15 | 2010-09-17 | 2d | 69.62d | 0d | start no earlier than 2010-09-15 |
| 13 | 1.3.2 | Draft ISO 27001 ISMS Project proposal |  | 2d | 2010-09-17 | 2010-09-21 | 12 | 2010-09-17 | 2010-09-21 | 2d | 69.62d | 0d | start no earlier than 2010-09-17 |
| 14 | 1.4 | **Internal Review** |  | 3d | 2010-09-17 | 2010-09-22 |  | 2010-09-17 | 2010-09-22 | 3d | 69.62d | 0d |  |
| 15 | 1.4.1 | Conduct Business Case review |  | 0.5d | 2010-09-17 | 2010-09-17 | 12 | 2010-09-17 | 2010-09-17 | 0.5d | 71.62d | 0d | start no earlier than 2010-09-17 |
| 16 | 1.4.2 | Conduct ISMS Project proposal review |  | 0.5d | 2010-09-21 | 2010-09-21 | 13 | 2010-09-21 | 2010-09-21 | 0.5d | 69.62d | 0d | start no earlier than 2010-09-21 |
| 17 | 1.4.3 | Incorporate comments and update documents |  | 4h | 2010-09-21 | 2010-09-22 | 15, 16 | 2010-09-21 | 2010-09-22 | 4h | 69.62d | 0d | start no earlier than 2010-09-21 |
| 18 | 1.5 | **Executive Sponsor Review** |  | 1.5d | 2010-09-22 | 2010-09-23 |  | 2010-09-22 | 2010-09-23 | 1.5d | 69.62d | 0d |  |
| 19 | 1.5.1 | Conduct Business Case review |  | 4h | 2010-09-22 | 2010-09-22 | 17 | 2010-09-22 | 2010-09-22 | 4h | 69.62d | 0d | start no earlier than 2010-09-22 |
| 20 | 1.5.2 | Conduct ISMS Project proposal review |  | 4h | 2010-09-22 | 2010-09-23 | 19 | 2010-09-22 | 2010-09-23 | 4h | 69.62d | 0d | start no earlier than 2010-09-22 |
| 21 | 1.5.3 | Incorporate comments and update documents |  | 4h | 2010-09-23 | 2010-09-23 | 19, 20 | 2010-09-23 | 2010-09-23 | 4h | 69.62d | 0d | start no earlier than 2010-09-23 |
| 22 | 1.6 | **PRB Submission** |  | 11.25d | 2010-09-23 | 2010-10-11 |  | 2010-09-23 | 2010-10-11 | 11.25d | 59d | 0d |  |
| 23 | 1.6.1 | Finalise documents for PRB submission |  | 4h | 2010-09-23 | 2010-09-24 | 21 | 2010-09-23 | 2010-09-24 | 4h | 69.62d | 0d | start no earlier than 2010-09-23 |
| 24 | 1.6.2 | Submit documents to Project Review Board |  | 1h | 2010-09-24 | 2010-09-24 | 23 | 2010-09-24 | 2010-09-24 | 1h | 69.62d | 0d | start no earlier than 2010-09-24 |
| 25 | 1.6.3 | PRB project approval | milestone | 0d | 2010-10-11 | 2010-10-11 | 24 | 2010-10-11 | 2010-10-11 | 0d | 59d | 0d | start no earlier than 2010-10-11 |

Notes:
- 1: Copyright / This work is copyright © 2010, ISO27k implementers' forum, some rights reserved.~ It is licensed under the Creative Commons Attribution-Noncommercial-Share Alike 3.0 License.~ You are welcome to reproduce, circulate, use and create derivative works from this provided that (a) it is not sold or incorporated into a commercial product, (b) it is properly attributed to the ISO27k implementers forum (www.ISO27001security.com), and (c)~derivative works are shared under the same terms as this. / Disclaimer / This is an example/sample project plan that needs to be tailored to specific organizations and circumstances by someone competent at ISMS implementation and project planning and management.~ It is merely guidance.~ Please refer to the ISO27k standards for further general guidance and/or consult qualified and experienced information security experts for specific advice tailored to your situation.

| ID | WBS | Task | Type | Duration | Start | Finish | Predecessors | Baseline start | Baseline finish | Baseline duration | Total slack | Free slack |
| --- | --- | --- | --- | --- | --- | --- | --- | --- | --- | --- | --- | --- |
| 26 | 1.7 | **ESTABLISH THE ISMS (PLAN)** |  | 29d? | 2010-10-11 | 2010-11-18 | 25 | 2010-10-11 | 2010-11-18 | 29d | 59d | 0d |
| 27 | 1.7.1 | **ISMS Scope and Boundaries** |  | 6d? | 2010-10-11 | 2010-10-18 |  | 2010-10-11 | 2010-10-18 | 6d | 59d | 0d |
| 28 | 1.7.1.1 | Define organisational scope and boundaries |  | 1d? | 2010-10-11 | 2010-10-11 | 9 | 2010-10-11 | 2010-10-11 | 1d | 59d | 0d |
| 29 | 1.7.1.2 | Define ICT scope and boundaries |  | 1d? | 2010-10-12 | 2010-10-12 | 28 | 2010-10-12 | 2010-10-12 | 1d | 59d | 0d |
| 30 | 1.7.1.3 | Define Physical scope and boundaries |  | 1d? | 2010-10-13 | 2010-10-13 | 29 | 2010-10-13 | 2010-10-13 | 1d | 59d | 0d |
| 31 | 1.7.1.4 | Integrate each scope & boundary |  | 1d? | 2010-10-14 | 2010-10-14 | 9, 30 | 2010-10-14 | 2010-10-14 | 1d | 59d | 0d |
| 32 | 1.7.1.5 | Develop ISMS scope and boundaries document |  | 1d? | 2010-10-15 | 2010-10-15 | 31 | 2010-10-15 | 2010-10-15 | 1d | 59d | 0d |
| 33 | 1.7.1.6 | ISMS Scope document review |  | 1d? | 2010-10-18 | 2010-10-18 | 32 | 2010-10-18 | 2010-10-18 | 1d | 59d | 0d |
| 34 | 1.7.1.7 | ISMS Scope published | milestone | 0d | 2010-10-18 | 2010-10-18 | 33 | 2010-10-18 | 2010-10-18 | 0d | 59d | 0d |
| 35 | 1.7.2 | **ISMS Information Security Requirements Analysis** |  | 2d? | 2010-10-19 | 2010-10-20 |  | 2010-10-19 | 2010-10-20 | 2d | 59d | 0d |
| 36 | 1.7.2.1 | Define information security requirements for the ISMS process |  | 1d? | 2010-10-19 | 2010-10-19 | 25, 34 | 2010-10-19 | 2010-10-19 | 1d | 59d | 0d |
| 37 | 1.7.2.2 | Conduct preliminary Gap Analysis |  | 1d? | 2010-10-20 | 2010-10-20 | 36 | 2010-10-20 | 2010-10-20 | 1d | 59d | 0d |
| 38 | 1.7.2.3 | Produce preliminary Gap Anlaysis Report | milestone | 0d | 2010-10-20 | 2010-10-20 | 37 | 2010-10-20 | 2010-10-20 | 0d | 59d | 0d |
| 39 | 1.7.3 | **ISMS MISF** |  | 2d? | 2010-10-19 | 2010-10-20 |  | 2010-10-19 | 2010-10-20 | 2d | 96d | 0d |
| 40 | 1.7.3.1 | Develop TOR's for MISF |  | 1d? | 2010-10-19 | 2010-10-19 | 34 | 2010-10-19 | 2010-10-19 | 1d | 96d | 0d |
| 41 | 1.7.3.2 | Convene MISF/Cross-functional group |  | 1d? | 2010-10-20 | 2010-10-20 | 40 | 2010-10-20 | 2010-10-20 | 1d | 96d | 0d |
| 42 | 1.7.4 | **ISMS Information Security Policy documents set** |  | 8d? | 2010-10-21 | 2010-11-01 |  | 2010-10-21 | 2010-11-01 | 8d | 59d | 0d |
| 43 | 1.7.4.1 | **Define procedures & controls in support of the ISMS** |  | 1d? | 2010-10-21 | 2010-10-21 | 36 | 2010-10-21 | 2010-10-21 | 1d | 59d | 0d |
| 44 | 1.7.4.1.1 | Define information security procedures |  | 1d? | 2010-10-21 | 2010-10-21 | 38 | 2010-10-21 | 2010-10-21 | 1d | 59d | 0d |
| 45 | 1.7.4.1.2 | Define control documentation |  | 1d? | 2010-10-21 | 2010-10-21 | 38 | 2010-10-21 | 2010-10-21 | 1d | 59d | 0d |
| 46 | 1.7.4.2 | **Define an ISMS Policy** |  | 4d? | 2010-10-22 | 2010-10-27 |  | 2010-10-22 | 2010-10-27 | 4d | 59d | 0d |
| 47 | 1.7.4.2.1 | Identify framework for setting objectives |  | 1d? | 2010-10-22 | 2010-10-22 | 43 | 2010-10-22 | 2010-10-22 | 1d | 59d | 0d |
| 48 | 1.7.4.2.2 | Identify information security compliance obligations |  | 1d? | 2010-10-25 | 2010-10-25 | 47 | 2010-10-25 | 2010-10-25 | 1d | 59d | 0d |
| 49 | 1.7.4.2.3 | Align with the strategic approach to risk management |  | 1d? | 2010-10-26 | 2010-10-26 | 48 | 2010-10-26 | 2010-10-26 | 1d | 59d | 0d |
| 50 | 1.7.4.2.4 | Establish risk appetite (information security risk evaluation criteria) |  | 1d? | 2010-10-27 | 2010-10-27 | 49 | 2010-10-27 | 2010-10-27 | 1d | 59d | 0d |
| 51 | 1.7.4.3 | Release draft ISMS Policy for review |  | 1d? | 2010-10-28 | 2010-10-28 | 46 | 2010-10-28 | 2010-10-28 | 1d | 59d | 0d |
| 52 | 1.7.4.4 | Release information security policy set for review |  | 1d? | 2010-10-29 | 2010-10-29 | 51, 44, 45 | 2010-10-29 | 2010-10-29 | 1d | 59d | 0d |
| 53 | 1.7.4.5 | Review information security policy document set |  | 1d? | 2010-11-01 | 2010-11-01 | 52 | 2010-11-01 | 2010-11-01 | 1d | 59d | 0d |
| 54 | 1.7.4.6 | Information Security Policy set published & approved by Management | milestone | 0d | 2010-11-01 | 2010-11-01 | 53 | 2010-11-01 | 2010-11-01 | 0d | 59d | 0d |

Notes:
- 27: ISO 27001 - 4.2.1 a)
- 28: ISO 27003 - 6.2
- 29: ISO 27003 - 6.3
- 30: ISO 27003 - 6.4
- 31: ISO 27003 - 6.5
- 32: ISO 27003 - 6.5
- 35: ISO 27003 - 7
- 36: ISO 27003 - 7.2
- 42: ISO 27001 - 4.2.1 b) partially
- 46: ISO 27001 - 4.2.1 b) and 5.1.a) / ISO 27003 - 6.6
- 54: ISO 27001 - 4.2.1 b) 5) / ISO 27003 - 6.6

| ID | WBS | Task | Type | Duration | Start | Finish | Predecessors | Baseline start | Baseline finish | Baseline duration | Total slack | Free slack |
| --- | --- | --- | --- | --- | --- | --- | --- | --- | --- | --- | --- | --- |
| 55 | 1.7.5 | **ISMS Risk Assessment Approach** |  | 1d? | 2010-11-02 | 2010-11-02 |  | 2010-11-02 | 2010-11-02 | 1d | 59d | 0d |
| 56 | 1.7.5.1 | **Define the risk assessment approach** |  | 1d? | 2010-11-02 | 2010-11-02 | 34, 54 | 2010-11-02 | 2010-11-02 | 1d | 59d | 0d |
| 57 | 1.7.5.1.1 | Identify the risk assessment methodoly |  | 1d? | 2010-11-02 | 2010-11-02 |  | 2010-11-02 | 2010-11-02 | 1d | 59d | 0d |
| 58 | 1.7.5.1.2 | Develop the criteria for accepting risks |  | 1d? | 2010-11-02 | 2010-11-02 |  | 2010-11-02 | 2010-11-02 | 1d | 59d | 0d |
| 59 | 1.7.5.1.3 | Identify the acceptable levels of risk |  | 1d? | 2010-11-02 | 2010-11-02 |  | 2010-11-02 | 2010-11-02 | 1d | 59d | 0d |
| 60 | 1.7.6 | **Asset Classification** |  | 6d? | 2010-10-28 | 2010-11-04 |  | 2010-10-28 | 2010-11-04 | 6d | 62d | 0d |
| 61 | 1.7.6.1 | **Identify assets within the scope of the ISMS** |  | 1d? | 2010-10-28 | 2010-10-28 | 36 | 2010-10-28 | 2010-10-28 | 1d | 62d | 0d |
| 62 | 1.7.6.1.1 | Develop procedure for Asset Classification |  | 1d? | 2010-10-28 | 2010-10-28 | 50 | 2010-10-28 | 2010-10-28 | 1d | 62d | 0d |
| 63 | 1.7.6.2 | **Risk Assessment Plan** |  | 2d? | 2010-11-03 | 2010-11-04 | 55 | 2010-11-03 | 2010-11-04 | 2d | 59d | 0d |
| 64 | 1.7.6.2.1 | Prepare Risk Assessment Plan |  | 1d? | 2010-11-03 | 2010-11-03 | 57, 62 | 2010-11-03 | 2010-11-03 | 1d | 59d | 0d |
| 65 | 1.7.6.2.2 | Publish Risk Assessment Plan |  | 1d? | 2010-11-04 | 2010-11-04 | 64 | 2010-11-04 | 2010-11-04 | 1d | 59d | 0d |
| 66 | 1.7.6.3 | Conduct Information Security assessment |  | 1d? | 2010-11-02 | 2010-11-02 | 38, 61, 62, 54 | 2010-11-02 | 2010-11-02 | 1d | 68d | 0d |
| 67 | 1.7.6.4 | Publish Information Security assessment report |  | 1d? | 2010-11-03 | 2010-11-03 | 66 | 2010-11-03 | 2010-11-03 | 1d | 68d | 0d |
| 68 | 1.7.7 | **ISMS Risk Assessment** |  | 10d? | 2010-11-05 | 2010-11-18 |  | 2010-11-05 | 2010-11-18 | 10d | 59d | 0d |
| 69 | 1.7.7.1 | **Information security Risk Assessment** |  | 3d? | 2010-11-05 | 2010-11-09 | 50, 58, 63 | 2010-11-05 | 2010-11-09 | 3d | 59d | 0d |
| 70 | 1.7.7.1.1 | Identify the risks - workshop/brainstorm |  | 1d? | 2010-11-05 | 2010-11-05 | 61 | 2010-11-05 | 2010-11-05 | 1d | 59d | 0d |
| 71 | 1.7.7.1.2 | Analyse and evaluate the risks |  | 1d? | 2010-11-08 | 2010-11-08 | 70 | 2010-11-08 | 2010-11-08 | 1d | 59d | 0d |
| 72 | 1.7.7.1.3 | Identify and evaluate the options for the treatment of risks |  | 1d? | 2010-11-09 | 2010-11-09 | 71 | 2010-11-09 | 2010-11-09 | 1d | 59d | 0d |
| 73 | 1.7.7.1.4 | Publish Risk Assessment report | milestone | 0d | 2010-11-09 | 2010-11-09 | 72 | 2010-11-09 | 2010-11-09 | 0d | 59d | 0d |
| 74 | 1.7.7.2 | **Control Objectives and Controls** |  | 5d? | 2010-11-10 | 2010-11-16 | 73 | 2010-11-10 | 2010-11-16 | 5d | 59d | 0d |
| 75 | 1.7.7.2.1 | Select control objectives and controls for risk treatment |  | 1d? | 2010-11-10 | 2010-11-10 | 58 | 2010-11-10 | 2010-11-10 | 1d | 59d | 0d |
| 76 | 1.7.7.2.2 | Draft the ISMS Risk Treatment Plan |  | 1d? | 2010-11-11 | 2010-11-11 | 75 | 2010-11-11 | 2010-11-11 | 1d | 59d | 0d |
| 77 | 1.7.7.2.3 | Inform Management of the proposed residual risks |  | 1d? | 2010-11-12 | 2010-11-12 | 76 | 2010-11-12 | 2010-11-12 | 1d | 59d | 0d |
| 78 | 1.7.7.2.4 | Management acceptance of residual risks |  | 1d? | 2010-11-15 | 2010-11-15 | 77 | 2010-11-15 | 2010-11-15 | 1d | 59d | 0d |
| 79 | 1.7.7.2.5 | Obtain Management authorisation to implement & operate the ISMS |  | 1d? | 2010-11-16 | 2010-11-16 | 34, 54, 78 | 2010-11-16 | 2010-11-16 | 1d | 59d | 0d |
| 80 | 1.7.7.2.6 | Document management approval to implement & operate the ISMS | milestone | 0d | 2010-11-16 | 2010-11-16 | 79 | 2010-11-16 | 2010-11-16 | 0d | 59d | 0d |

Notes:
- 56: ISO 27001 - 4.2.1c)
- 57: ISO 27001 - 4.2.1c)1)
- 58: ISO 27001 - 4.2.1c)2) and 5.1f)
- 60: ISO 27001 - 4.2.1 d) 1) / ISO 27003 - 7.3
- 61: ISO 27001 - 4.2.1 d) 1)
- 66: ISO 27003 - 7.4
- 68: ISO 27001 - 4.2.1 c) to 4.2.1 j) / ISO 27003 - 8
- 70: ISO 27001 - 4.2.1 d)
- 71: ISO 27001 - 4.2.1 e)
- 72: ISO 27001 - 4.2.1 f)
- 74: ISO 27003 - 8.3
- 75: ISO 27001 - 4.2.1 g)
- 77: ISO 27001 - 4.2.1 h)
- 78: ISO 27003 - 8.4 / Output - c)
- 79: ISO 27001 - 4.2.1 i)

| ID | WBS | Task | Type | Duration | Start | Finish | Predecessors | Baseline start | Baseline finish | Baseline duration | Total slack | Free slack | Constraint |
| --- | --- | --- | --- | --- | --- | --- | --- | --- | --- | --- | --- | --- | --- |
| 81 | 1.7.7.3 | **ISMS Statement of Applicability** |  | 1d? | 2010-11-17 | 2010-11-17 |  | 2010-11-17 | 2010-11-17 | 1d | 59d | 0d |  |
| 82 | 1.7.7.3.1 | Prepare the ISMS Statement of Applicability (SoA) |  | 1d? | 2010-11-17 | 2010-11-17 | 73, 79 | 2010-11-17 | 2010-11-17 | 1d | 59d | 0d |  |
| 83 | 1.7.7.3.2 | Publish the ISMS SoA | milestone | 0d | 2010-11-17 | 2010-11-17 | 82 | 2010-11-17 | 2010-11-17 | 0d | 59d | 0d |  |
| 84 | 1.7.7.4 | **ISO 27003 Checklist** |  | 1d? | 2010-11-18 | 2010-11-18 |  | 2010-11-18 | 2010-11-18 | 1d | 66d | 0d |  |
| 85 | 1.7.7.4.1 | Validate stage tasks complete from ISO 27003 checklist |  | 1d? | 2010-11-18 | 2010-11-18 | 83 | 2010-11-18 | 2010-11-18 | 1d | 66d | 0d |  |
| 86 | 1.8 | **IMPLEMENT AND OPERATE THE ISMS (DO)** |  | 69d? | 2010-11-17 | 2011-02-21 |  | 2010-11-17 | 2011-02-21 | 69d | 13d | 0d |  |
| 87 | 1.8.1 | ISMS Operational Window |  | 1d? | 2011-02-21 | 2011-02-21 | 85 | 2011-02-21 | 2011-02-21 | 1d | 0d |  | finish no earlier than 2011-02-21 |
| 88 | 1.8.2 | **Risk Treatment** |  | 7d? | 2010-11-18 | 2010-11-26 |  | 2010-11-18 | 2010-11-26 | 7d | 59d | 0d |  |
| 89 | 1.8.2.1 | Formulate the ISMS Risk Treatment Plan (RTP) |  | 1d? | 2010-11-18 | 2010-11-18 | 76, 83 | 2010-11-18 | 2010-11-18 | 1d | 59d | 0d |  |
| 90 | 1.8.2.2 | Implement ISMS RTP |  | 6d? | 2010-11-19 | 2010-11-26 | 89 | 2010-11-19 | 2010-11-26 | 6d | 59d | 0d |  |
| 91 | 1.8.3 | **Control Implementation** |  | 2d? | 2010-11-29 | 2010-11-30 |  | 2010-11-29 | 2010-11-30 | 2d | 59d | 0d |  |
| 92 | 1.8.3.1 | Implement selected controls to meet control objectives |  | 1d? | 2010-11-29 | 2010-11-29 | 75, 90 | 2010-11-29 | 2010-11-29 | 1d | 59d | 0d |  |
| 93 | 1.8.3.2 | Define how to measure the effectiveness of selected controls |  | 1d? | 2010-11-30 | 2010-11-30 | 92 | 2010-11-30 | 2010-11-30 | 1d | 59d | 0d |  |
| 94 | 1.8.4 | **Organisational information security** |  | 2d? | 2010-11-17 | 2010-11-18 |  | 2010-11-17 | 2010-11-18 | 2d | 59d | 0d |  |
| 95 | 1.8.4.1 | **Design final organisational structure for information security** |  | 2d? | 2010-11-17 | 2010-11-18 |  | 2010-11-17 | 2010-11-18 | 2d | 59d | 0d |  |
| 96 | 1.8.4.1.1 | Input rôles, responsibilities, reporting lines |  | 1d? | 2010-11-17 | 2010-11-17 | 8, 34, 36, 46, 61, 67, 73, 74 | 2010-11-17 | 2010-11-17 | 1d | 59d | 0d |  |
| 97 | 1.8.4.1.2 | Publish final org structure for ISMS |  | 1d? | 2010-11-18 | 2010-11-18 | 96 | 2010-11-18 | 2010-11-18 | 1d | 59d | 0d |  |
| 98 | 1.8.5 | **ISMS Documentation Framework** |  | 4d? | 2010-11-19 | 2010-11-24 | 79, 97 | 2010-11-19 | 2010-11-24 | 4d | 59d | 0d |  |
| 99 | 1.8.5.1 | Identify requirements for ISMS records and document control |  | 1d? | 2010-11-19 | 2010-11-19 | 34, 54 | 2010-11-19 | 2010-11-19 | 1d | 59d | 0d |  |
| 100 | 1.8.5.2 | Design documentation requirements |  | 1d? | 2010-11-22 | 2010-11-22 | 99 | 2010-11-22 | 2010-11-22 | 1d | 59d | 0d |  |
| 101 | 1.8.5.3 | Design recording requirements |  | 1d? | 2010-11-23 | 2010-11-23 | 100 | 2010-11-23 | 2010-11-23 | 1d | 77d | 0d |  |
| 102 | 1.8.5.4 | Publish Document Control procedure |  | 1d? | 2010-11-23 | 2010-11-23 | 100 | 2010-11-23 | 2010-11-23 | 1d | 59d | 0d |  |
| 103 | 1.8.5.5 | Publish Records Control procedure |  | 1d? | 2010-11-24 | 2010-11-24 | 102 | 2010-11-24 | 2010-11-24 | 1d | 59d | 0d |  |
| 104 | 1.8.6 | **Informaiton Security Policy Manual** |  | 1d? | 2010-11-25 | 2010-11-25 |  | 2010-11-25 | 2010-11-25 | 1d | 59d | 0d |  |
| 105 | 1.8.6.1 | Collate/input required information |  | 1d? | 2010-11-25 | 2010-11-25 | 9, 97, 103 | 2010-11-25 | 2010-11-25 | 1d | 59d | 0d |  |
| 106 | 1.8.6.2 | Publish ISMS Information Security Policy Manual | milestone | 0d | 2010-11-25 | 2010-11-25 | 105 | 2010-11-25 | 2010-11-25 | 0d | 59d | 0d |  |

Notes:
- 82: ISO 27001 - 4.2.1 j)
- 85: ISO 27003 - Annex A
- 89: ISO 27001 - 4.2.2 a)
- 90: ISO 27001 - 4.2.2 b)
- 92: ISO 27001 - 4.2.2 c)
- 93: ISO 27001 - 4.2.2 d)
- 94: ISO 27003 - Clause 9.2
- 95: ISO 27003 - 9.2.1
- 96: Input defined roles and responsibilities from SHS ISMS Preliminary Scope / Input - SHS ISMS Scope / Input - SHS ISMS Policy / Input - Information security requirements for the SHS ISMS process / Input - Identified assets within scope / Input - Information Security Assessment report / Input - Risk Assessment results / Input - Selected controls and control objectives
- 98: ISO 27001 - 4.3 / ISO 27003 - 9.2.2
- 100: ISO 27001 - 4.3.2
- 101: ISO 27001 - 4.3.3
- 104: ISO 27003 - 9.2.3
- 105: ISO 27003 - 9.2.3 a) / Input - Initial management approval for the ISMS project (PRB approval) / Input - Final org structure for SHS ISMS / Input - Framework for documentation of the SHS ISMS / Note - All the other outputs listed in 9.2.3 c) through h) were captured in the final org structure (9.2.3 i)) so haven't been relisted under the Information Security Policy Manual task

| ID | WBS | Task | Duration | Start | Finish | Predecessors | Baseline start | Baseline finish | Baseline duration | Total slack | Free slack |
| --- | --- | --- | --- | --- | --- | --- | --- | --- | --- | --- | --- |
| 107 | 1.8.7 | **Develop information security standards and procedures** | 2d? | 2010-11-26 | 2010-11-29 |  | 2010-11-26 | 2010-11-29 | 2d | 59d | 0d |
| 108 | 1.8.7.1 | Workshop to develop information security standards | 1d? | 2010-11-26 | 2010-11-26 | 106 | 2010-11-26 | 2010-11-26 | 1d | 59d | 0d |
| 109 | 1.8.7.2 | Publish organisational security implementation plan | 1d? | 2010-11-29 | 2010-11-29 | 108 | 2010-11-29 | 2010-11-29 | 1d | 59d | 0d |
| 110 | 1.8.8 | **Training and Awareness** | 2d? | 2010-11-30 | 2010-12-01 |  | 2010-11-30 | 2010-12-01 | 2d | 71d | 0d |
| 111 | 1.8.8.1 | Design information security awareness, training and education program | 1d? | 2010-11-30 | 2010-11-30 | 109 | 2010-11-30 | 2010-11-30 | 1d | 71d | 0d |
| 112 | 1.8.8.2 | Launch information security awareness program | 1d? | 2010-12-01 | 2010-12-01 | 111 | 2010-12-01 | 2010-12-01 | 1d | 71d | 0d |
| 113 | 1.8.9 | **Manage operation and resources of the ISMS** | 3d? | 2010-11-26 | 2010-11-30 |  | 2010-11-26 | 2010-11-30 | 3d | 59d | 0d |
| 114 | 1.8.9.1 | Design ICT and Physical information security | 1d? | 2010-11-30 | 2010-11-30 | 80, 107 | 2010-11-30 | 2010-11-30 | 1d | 59d | 0d |
| 115 | 1.8.9.2 | **Design ISMS specific information security** | 2d? | 2010-11-26 | 2010-11-29 |  | 2010-11-26 | 2010-11-29 | 2d | 60d | 0d |
| 116 | 1.8.9.2.1 | Plan for management reviews | 1d? | 2010-11-26 | 2010-11-26 | 106 | 2010-11-26 | 2010-11-26 | 1d | 60d | 0d |
| 117 | 1.8.9.2.2 | Publish procedure for management reviews | 1d? | 2010-11-29 | 2010-11-29 | 116 | 2010-11-29 | 2010-11-29 | 1d | 60d | 0d |
| 118 | 1.8.10 | **ISO 27003 Checklist** | 1d? | 2010-11-30 | 2010-11-30 |  | 2010-11-30 | 2010-11-30 | 1d | 72d | 0d |
| 119 | 1.8.10.1 | Validate stage tasks complete from ISO 27003 checklist | 1d? | 2010-11-30 | 2010-11-30 | 117 | 2010-11-30 | 2010-11-30 | 1d | 72d | 0d |
| 120 | 1.9 | **MONITOR AND REVIEW THE ISMS (CHECK)** | 11d? | 2011-02-22 | 2011-03-08 | 87 | 2011-02-22 | 2011-03-08 | 11d | 0d |  |
| 121 | 1.9.1 | **Monitoring and reviewing procedures** | 1d? | 2011-02-22 | 2011-02-22 |  | 2011-02-22 | 2011-02-22 | 1d | 0d |  |
| 122 | 1.9.1.1 | Execute monitoring and reviewing procedures | 1d? | 2011-02-22 | 2011-02-22 | 93, 113 | 2011-02-22 | 2011-02-22 | 1d | 0d |  |
| 123 | 1.9.2 | **Internal Audits** | 5d? | 2011-02-23 | 2011-03-01 |  | 2011-02-23 | 2011-03-01 | 5d | 2d | 0d |
| 124 | 1.9.2.1 | Audit Planning Preparation | 1d? | 2011-02-23 | 2011-02-23 | 122 | 2011-02-23 | 2011-02-23 | 1d | 2d | 0d |
| 125 | 1.9.2.2 | Auditors Selection and Training | 1d? | 2011-02-24 | 2011-02-24 | 124 | 2011-02-24 | 2011-02-24 | 1d | 2d | 0d |
| 126 | 1.9.2.3 | Internal Audit Execution | 1d? | 2011-02-25 | 2011-02-25 | 125 | 2011-02-25 | 2011-02-25 | 1d | 2d | 0d |
| 127 | 1.9.2.4 | Internal Audit Documentation | 1d? | 2011-02-28 | 2011-02-28 | 126 | 2011-02-28 | 2011-02-28 | 1d | 2d | 0d |
| 128 | 1.9.2.5 | Corrective and Preventive Actions Report | 1d? | 2011-03-01 | 2011-03-01 | 127 | 2011-03-01 | 2011-03-01 | 1d | 2d | 0d |
| 129 | 1.9.3 | **External Audit** | 2d? | 2011-03-02 | 2011-03-03 |  | 2011-03-02 | 2011-03-03 | 2d | 2d | 0d |
| 130 | 1.9.3.1 | Contact external auditor | 1d? | 2011-03-02 | 2011-03-02 | 128 | 2011-03-02 | 2011-03-02 | 1d | 2d | 0d |
| 131 | 1.9.3.2 | Arrange external audit | 1d? | 2011-03-03 | 2011-03-03 | 130 | 2011-03-03 | 2011-03-03 | 1d | 2d | 0d |

Notes:
- 107: ISO 27003 - 9.2.4
- 109: ISO 27003 - Page 38 / Output a) - c) / The deliverable of this activity is a structured and detailed implementation plan for controls relating to / organizational security as part of the final ISMS project plan, to include a documented framework of the set of information security standards, information security standards including the baseline of the organization and information security procedures achieving the information security standards.
- 111: ISO 27001 - 4.2.2 e) and 5.2.2 / ISO 27003 - 9.4.2 / For specific training requirements see guidance on pages 42 and 43 of ISO 27003
- 113: ISO 27001 - 4.2.2 f), g) and h)
- 114: ISO 27003 - 9.3 / The deliverables of this activity is a structured and detailed implementation plan for controls relating to ICT and physical security as part of the ISMS Project Plan, to include, for each control: / a) detailed description / b) responsibilities for design and implementation / c) expected timescales / d) tasks involved / e) resources required / f) ownership (reporting lines)
- 115: ISO 27003 - 9.4
- 116: ISO 27003 - 9.4.1
- 119: ISO 27003 - Annex A
- 122: ISO 27001 - 4.2.3 a)
- 123: ISO 27001 - 4.2.3 b) and e) and 6

| ID | WBS | Task | Duration | Start | Finish | Predecessors | Baseline start | Baseline finish | Baseline duration | Total slack | Free slack |
| --- | --- | --- | --- | --- | --- | --- | --- | --- | --- | --- | --- |
| 132 | 1.9.4 | **Control measurement** | 1d? | 2011-03-04 | 2011-03-04 |  | 2011-03-04 | 2011-03-04 | 1d | 2d | 0d |
| 133 | 1.9.4.1 | Measure control effectiveness to verify security requirements are met | 1d? | 2011-03-04 | 2011-03-04 | 129 | 2011-03-04 | 2011-03-04 | 1d | 2d | 0d |
| 134 | 1.9.5 | **Risk Assessment Reviews** | 2d? | 2011-03-07 | 2011-03-08 | 73 | 2011-03-07 | 2011-03-08 | 2d | 2d | 0d |
| 135 | 1.9.5.1 | Plan Risk assessment reviews | 1d? | 2011-03-07 | 2011-03-07 | 133 | 2011-03-07 | 2011-03-07 | 1d | 2d | 0d |
| 136 | 1.9.5.2 | Conduct initial risk assessment review | 1d? | 2011-03-08 | 2011-03-08 | 135 | 2011-03-08 | 2011-03-08 | 1d | 2d | 0d |
| 137 | 1.9.6 | **Management Reviews** | 2d? | 2011-02-22 | 2011-02-23 |  | 2011-02-22 | 2011-02-23 | 2d | 11d | 0d |
| 138 | 1.9.6.1 | Plan management reviews | 1d? | 2011-02-22 | 2011-02-22 | 117 | 2011-02-22 | 2011-02-22 | 1d | 11d | 0d |
| 139 | 1.9.6.2 | Undertake management review of the ISMS | 1d? | 2011-02-23 | 2011-02-23 | 138 | 2011-02-23 | 2011-02-23 | 1d | 11d | 0d |
| 140 | 1.9.7 | **Security plans** | 2d? | 2011-02-23 | 2011-02-24 |  | 2011-02-23 | 2011-02-24 | 2d | 0d |  |
| 141 | 1.9.7.1 | Update security plans to take account of monitoring and reviewing | 1d? | 2011-02-23 | 2011-02-23 | 122 | 2011-02-23 | 2011-02-23 | 1d | 0d |  |
| 142 | 1.9.7.2 | Record actions & events that impact ISMS | 1d? | 2011-02-24 | 2011-02-24 | 141 | 2011-02-24 | 2011-02-24 | 1d | 0d |  |
| 143 | 1.9.8 | **ISO 27003 Checklist** | 1d? | 2011-02-25 | 2011-02-25 |  | 2011-02-25 | 2011-02-25 | 1d | 0d |  |
| 144 | 1.9.8.1 | Validate stage tasks complete from ISO 27003 checklist | 1d? | 2011-02-25 | 2011-02-25 | 142 | 2011-02-25 | 2011-02-25 | 1d | 0d |  |
| 145 | 1.10 | **MAINTAIN AND IMPROVE THE ISMS (ACT)** | 9d? | 2011-02-28 | 2011-03-10 |  | 2011-02-28 | 2011-03-10 | 9d | 0d |  |
| 146 | 1.10.1 | **ISMS Improvement** | 7d? | 2011-02-28 | 2011-03-08 | 144 | 2011-02-28 | 2011-03-08 | 7d | 0d |  |
| 147 | 1.10.1.1 | Implement identified improvements to ISMS | 1d? | 2011-02-28 | 2011-02-28 |  | 2011-02-28 | 2011-02-28 | 1d | 0d |  |
| 148 | 1.10.1.2 | Develop corrective actions procedure | 1d? | 2011-03-01 | 2011-03-01 | 147 | 2011-03-01 | 2011-03-01 | 1d | 6d | 0d |
| 149 | 1.10.1.3 | Develop preventative actions procedure | 1d? | 2011-03-01 | 2011-03-01 | 147 | 2011-03-01 | 2011-03-01 | 1d | 0d |  |
| 150 | 1.10.1.4 | Publish corrective actions procedure | 1d? | 2011-03-02 | 2011-03-02 | 148 | 2011-03-02 | 2011-03-02 | 1d | 6d | 0d |
| 151 | 1.10.1.5 | Publish preventative actions procedure | 1d? | 2011-03-02 | 2011-03-02 | 149 | 2011-03-02 | 2011-03-02 | 1d | 0d |  |
| 152 | 1.10.1.6 | Take appropriate corrective and preventation actions | 1d? | 2011-03-03 | 2011-03-03 | 100, 151 | 2011-03-03 | 2011-03-03 | 1d | 0d |  |
| 153 | 1.10.1.7 | Communicate actions and improvements to interested parties | 1d? | 2011-03-04 | 2011-03-04 | 41, 152 | 2011-03-04 | 2011-03-04 | 1d | 0d |  |
| 154 | 1.10.1.8 | Ensure improvements achieve intended objectives | 1d? | 2011-03-07 | 2011-03-07 | 153 | 2011-03-07 | 2011-03-07 | 1d | 0d |  |
| 155 | 1.10.1.9 | Final Corrections | 1d? | 2011-03-08 | 2011-03-08 | 154 | 2011-03-08 | 2011-03-08 | 1d | 0d |  |

Notes:
- 133: ISO 27001 - 4.2.3 c)
- 134: ISO 27001 - 4.2.3 d)
- 137: ISO 27001 - 4.2.3 f) and 7
- 141: ISO 27001 - 4.2.3 g)
- 142: ISO 27001 - 4.2.3 h)
- 144: ISO 27003 - Annex A
- 146: ISO 27001 - 8
- 147: ISO 27001 - 4.2.4 a) / Implement the identified improvements to the ISMS - Improving what you already have.
- 152: ISO 27001 - 4.2.4 b), 8.2 and 8.3 / Implement improvements to correct deficiencies found during review.
- 153: ISO 27001 - 4.2.4c)

| ID | WBS | Task | Type | Duration | Start | Finish | Predecessors | Baseline start | Baseline finish | Baseline duration | Total slack | Free slack |
| --- | --- | --- | --- | --- | --- | --- | --- | --- | --- | --- | --- | --- |
| 156 | 1.10.2 | **Compliance review** |  | 2d? | 2011-03-09 | 2011-03-10 |  | 2011-03-09 | 2011-03-10 | 2d | 0d |  |
| 157 | 1.10.2.1 | Complete conformity with ISO 27003 checklist - Compliance Review |  | 1d? | 2011-03-09 | 2011-03-09 | 155 | 2011-03-09 | 2011-03-09 | 1d | 0d |  |
| 158 | 1.10.2.2 | Non-conformities corrections |  | 1d? | 2011-03-10 | 2011-03-10 | 157 | 2011-03-10 | 2011-03-10 | 1d | 0d |  |
| 159 | 1.11 | **External Audit of ISMS** |  | 136d? | 2010-09-02 | 2011-03-10 |  | 2010-09-02 | 2011-03-10 | 136d | 0d |  |
| 160 | 1.11.1 | Arrange final audit paperwork |  | 1d? | 2010-09-02 | 2010-09-02 |  | 2010-09-02 | 2010-09-02 | 1d | 135d | 0d |
| 161 | 1.11.2 | Convene pre-audit MISF |  | 1d? | 2010-09-02 | 2010-09-02 |  | 2010-09-02 | 2010-09-02 | 1d | 135d | 0d |
| 162 | 1.11.3 | Audit (Final Assessment) | milestone | 0d | 2011-03-10 | 2011-03-10 | 131, 158 | 2011-03-10 | 2011-03-10 | 0d | 0d |  |
